# 国家消防救援局项目

Schedule from a web Gantt chart, 2024-04-08 to 2024-04-30.
Saturdays and Sundays are off

## Schedule

| ID | WBS | Task | Duration | Start | Finish | Predecessors | Complete | inPeople | Status |
| --- | --- | --- | --- | --- | --- | --- | --- | --- | --- |
| 2 | 1 | 项目启动 | 1d | 2024-04-08 | 2024-04-08 |  | 100% | 谷先 | done |
| 3 | 2 | **产品设计** | 7d | 2024-04-08 | 2024-04-16 |  | 100% | 万鸣宇 | done |
| 4 | 2.1 | 登录页、成员、设备管理页面设计 | 3d | 2024-04-08 | 2024-04-10 |  | 100% | 万鸣宇 | done |
| 5 | 2.2 | 总览页产品设计 | 4d | 2024-04-11 | 2024-04-16 |  | 100% | 万鸣宇 | done |
| 6 | 3 | **UI页面设计** | 6d | 2024-04-11 | 2024-04-18 |  | 33% | 邵国栋 |  |
| 7 | 3.1 | 登录页、成员、设备管理页面UI绘制 | 1d | 2024-04-11 | 2024-04-11 | 4 | 100% |  | done |
| 8 | 3.2 | 总览页UI绘制 | 2d | 2024-04-17 | 2024-04-18 | 5 |  |  |  |
| 9 | 4 | **前后端开发** | 10d | 2024-04-12 | 2024-04-25 |  | 83% | 张卫群 |  |
| 10 | 4.1 | **前端开发** | 5d | 2024-04-12 | 2024-04-18 |  | 83% | 刘敏 |  |
| 11 | 4.1.1 | 风筝线接口复用开发 | 1d | 2024-04-12 | 2024-04-12 |  |  |  |  |
| 12 | 4.1.2 | 页面开发 | 5d | 2024-04-12 | 2024-04-18 | 7 | 100% |  | done |
| 13 | 4.1.3 | 接口功能开发 | 5d | 2024-04-12 | 2024-04-18 | 7 | 100% |  | done |
| 14 | 4.1.4 | 接口联调 | 1d | 2024-04-12 | 2024-04-12 |  |  |  |  |
| 15 | 4.2 | **后端开发** | 10d | 2024-04-12 | 2024-04-25 |  | 83% | 张卫群 |  |
| 16 | 4.2.1 | 基础数据整理及导入 | 10d | 2024-04-12 | 2024-04-25 |  |  |  |  |
| 17 | 4.2.2 | 项目框架重新搭建 | 1d | 2024-04-12 | 2024-04-12 |  |  |  |  |
| 18 | 4.2.3 | 权限菜单模块调整 | 1d | 2024-04-12 | 2024-04-12 |  |  |  |  |
| 19 | 4.2.4 | 接口开发及联调 | 1d | 2024-04-12 | 2024-04-12 |  |  |  |  |
| 20 | 4.2.5 | 成员查询接口开发 | 5d | 2024-04-12 | 2024-04-18 | 7 | 100% |  | done |
| 21 | 4.2.6 | 无人机设备查询接口开发 | 5d | 2024-04-12 | 2024-04-18 | 7 | 100% |  | done |
| 22 | 4.2.7 | 负载查询接口开发 | 5d | 2024-04-12 | 2024-04-18 | 7 | 100% |  | done |
| 23 | 4.2.8 | 型号列表查询接口开发 | 5d | 2024-04-12 | 2024-04-18 | 7 | 100% |  | done |
| 24 | 5 | 测试 | 3d | 2024-04-24 | 2024-04-26 |  |  |  | waiting |
| 25 | 6 | 部署 | 2d | 2024-04-29 | 2024-04-30 |  |  |  | waiting |
| 26 | 7 | 项目一期完成 | 1d | 2024-04-30 | 2024-04-30 |  |  |  | waiting |
